# Opracowanie strony internetowej

Schedule from MS Project, 2024-03-25 to 2024-04-09.

## Calendars

- Standardowy: Mon-Fri 09:00-13:00, 14:00-18:00; Sat-Sun off.

## Resources

| Resource |
| --- |
| Olek Student Super |
| Dupa |

## Schedule

| ID | WBS | Task | Duration | Start | Finish | Total slack |
| --- | --- | --- | --- | --- | --- | --- |
| 1 | 1 | **Iteracja 1 - Definicja wymagań** | 1d | 2024-03-25 | 2024-03-25 | 11d |
| 2 | 1.1 | **Raporty** | 1d | 2024-03-25 | 2024-03-25 | 11d |
| 3 | 1.1.1 | **Specyfikacje funkcjonalne** | 1d | 2024-03-25 | 2024-03-25 | 11d |
| 4 | 1.1.1.1 | **Zbierz wymagania użytkownika** | 1d | 2024-03-25 | 2024-03-25 | 11d |
| 5 | 1.1.1.1.1 | Zdefiniuj elementy danych | 1d | 2024-03-25 | 2024-03-25 | 11d |
| 6 | 1.1.1.1.2 | Zdefiniuj częstotliwość wywoływania strony | 1d | 2024-03-25 | 2024-03-25 | 11d |
| 7 | 1.1.1.1.3 | Zdefiniuj odbiorców | 1d | 2024-03-25 | 2024-03-25 | 11d |
| 8 | 1.1.1.2 | Raporty z wykonanych projektów | 1d | 2024-03-25 | 2024-03-25 | 11d |
| 9 | 1.1.1.3 | Zdefiniuj raport z zespołem projektowym | 1d | 2024-03-25 | 2024-03-25 | 11d |
| 10 | 1.1.1.4 | Dostarcz ostateczne specyfikacje funkcjonalne | 1d | 2024-03-25 | 2024-03-25 | 11d |
| 11 | 1.1.1.5 | Uzyskaj akceptację użytkownika | 1d | 2024-03-25 | 2024-03-25 | 11d |
| 14 | 2 | **Iteracja 2 - Baza danych** | 12d? | 2024-03-25 | 2024-04-09 | 0d |
| 15 | 2.1 | **Projektowanie** | 12d | 2024-03-25 | 2024-04-09 | 0d |
| 16 | 2.1.1 | **Interfejs użytkownika internetowego** | 12d | 2024-03-25 | 2024-04-09 | 0d |
| 17 | 2.1.1.1 | **Specyfikacja techniczna** | 12d | 2024-03-25 | 2024-04-09 | 0d |
| 18 | 2.1.1.1.1 | Opracuj specyfikacje techniczne | 5d | 2024-03-25 | 2024-03-29 | 7d |
| 19 | 2.1.1.1.2 | Zapoznaj się z specyfikacjami technicznymi z zespołem projektowym | 12d | 2024-03-25 | 2024-04-09 | 0d |
| 20 | 2.1.1.1.3 | Uzyskaj akceptację zespołu | 2d | 2024-03-25 | 2024-03-26 | 10d |
| 21 | 2.1.2 | **Baza danych SQL** | 5d | 2024-03-25 | 2024-03-29 | 7d |
| 22 | 2.1.2.1 | **Specyfikacja techniczna** | 5d | 2024-03-25 | 2024-03-29 | 7d |
| 23 | 2.1.2.1.1 | Opracuj specyfikacje techniczne | 5d | 2024-03-25 | 2024-03-29 | 7d |
| 24 | 2.1.2.1.2 | Zapoznaj się z specyfikacjami technicznymi z zespołem projektowym | 4d | 2024-03-25 | 2024-03-28 | 8d |
| 25 | 2.1.2.1.3 | Uzyskaj akceptację zespołu | 2d | 2024-03-25 | 2024-03-26 | 10d |
| 26 | 2.2 | **Implementacja** | 1d | 2024-03-25 | 2024-03-25 | 11d |
| 27 | 2.2.1 | **Baza danych SQL** | 1d | 2024-03-25 | 2024-03-25 | 11d |
| 28 | 2.2.1.1 | Identyfikuj relacje | 1d | 2024-03-25 | 2024-03-25 | 11d |
| 29 | 2.2.1.2 | Tworzenie tabel bazy danych | 1d | 2024-03-25 | 2024-03-25 | 11d |
| 30 | 2.2.1.3 | Przegląd tabel z zespołem projektowym | 1d | 2024-03-25 | 2024-03-25 | 11d |
| 31 | 2.2.1.4 | Uzyskaj akceptację zespołu | 1d | 2024-03-25 | 2024-03-25 | 11d |

| ID | WBS | Task | Duration | Start | Finish | Total slack |
| --- | --- | --- | --- | --- | --- | --- |
| 32 | 2.3 | **Zapewnienie jakości** | 1d? | 2024-03-25 | 2024-03-25 | 11d |
| 33 | 2.3.1 | **Baza danych SQL** | 1d? | 2024-03-25 | 2024-03-25 | 11d |
| 34 | 2.3.1.1 | Weryfikuj elementy projektu / danych | 1d? | 2024-03-25 | 2024-03-25 | 11d |
| 35 | 2.3.1.2 | Zweryfikuj relacje | 1d? | 2024-03-25 | 2024-03-25 | 11d |
| 36 | 2.4 | **Zapewnienie jakości** | 1d | 2024-03-25 | 2024-03-25 | 11d |
| 37 | 2.4.1 | **Raporty** | 1d | 2024-03-25 | 2024-03-25 | 11d |
| 38 | 2.4.1.1 | Sprawdź projekt i funkcjonalność | 1d | 2024-03-25 | 2024-03-25 | 11d |
| 42 | 3 | **Iteracja 3 - Komunikacja między modułami** | 1d | 2024-03-25 | 2024-03-25 | 11d |
| 43 | 3.1 | **Projektowanie** | 1d | 2024-03-25 | 2024-03-25 | 11d |
| 44 | 3.1.1 | **Interfejsy podsystemów** | 1d | 2024-03-25 | 2024-03-25 | 11d |
| 45 | 3.1.1.1 | **Określ elementy importu / eksportu danych** | 1d | 2024-03-25 | 2024-03-25 | 11d |
| 46 | 3.1.1.1.1 | Zdefiniuj potrzeby użytkownika | 1d | 2024-03-25 | 2024-03-25 | 11d |
| 47 | 3.1.1.1.2 | Zdefiniuj potrzeby informatyczne | 1d | 2024-03-25 | 2024-03-25 | 11d |
| 48 | 3.1.1.2 | Interfejsy projektowe | 1d | 2024-03-25 | 2024-03-25 | 11d |
| 49 | 3.1.1.3 | Uzyskaj akceptację zespołu | 1d | 2024-03-25 | 2024-03-25 | 11d |
| 50 | 3.2 | **Implementacja** | 1d | 2024-03-25 | 2024-03-25 | 11d |
| 51 | 3.2.1 | **Interfejsy międzymodułowe** | 1d | 2024-03-25 | 2024-03-25 | 11d |
| 52 | 3.2.1.1 | Zbuduj interfejsy | 1d | 2024-03-25 | 2024-03-25 | 11d |
| 53 | 3.2.1.2 | Przeprowadź test jednostkowy funkcji importu / eksportu | 1d | 2024-03-25 | 2024-03-25 | 11d |
| 54 | 3.2.1.3 | Uzyskaj akceptację zespołu | 1d | 2024-03-25 | 2024-03-25 | 11d |
| 55 | 3.3 | **Zapewnienie jakości** | 1d | 2024-03-25 | 2024-03-25 | 11d |
| 56 | 3.3.1 | **Interfejsy** | 1d | 2024-03-25 | 2024-03-25 | 11d |
| 57 | 3.3.1.1 | Sprawdź projekt i funkcjonalność | 1d | 2024-03-25 | 2024-03-25 | 11d |
| 58 | 3.4 | **Zapewnienie jakości** | 1d | 2024-03-25 | 2024-03-25 | 11d |
| 59 | 3.4.1 | **Raporty** | 1d | 2024-03-25 | 2024-03-25 | 11d |
| 60 | 3.4.1.1 | Sprawdź projekt i funkcjonalność | 1d | 2024-03-25 | 2024-03-25 | 11d |
| 61 | 3.4.1.2 | Raportuj test integracji | 1d | 2024-03-25 | 2024-03-25 | 11d |
| 62 | 3.4.1.3 | Raportuj test akceptacji użytkownika | 1d | 2024-03-25 | 2024-03-25 | 11d |
| 63 | 3.4.1.4 | Uzyskaj akceptację użytkownika | 1d | 2024-03-25 | 2024-03-25 | 11d |

| ID | WBS | Task | Duration | Start | Finish | Total slack |
| --- | --- | --- | --- | --- | --- | --- |
| 67 | 4 | **Iteracja 4 - Interfejs użytkownika** | 1d | 2024-03-25 | 2024-03-25 | 11d |
| 68 | 4.1 | **Projektowanie** | 1d | 2024-03-25 | 2024-03-25 | 11d |
| 69 | 4.1.1 | **Interfejs użytkownika internetowego** | 1d | 2024-03-25 | 2024-03-25 | 11d |
| 70 | 4.1.1.1 | **Specyfikacje funkcjonalne** | 1d | 2024-03-25 | 2024-03-25 | 11d |
| 71 | 4.1.1.1.1 | Utwórz makiety interfejsu użytkownika | 1d | 2024-03-25 | 2024-03-25 | 11d |
| 72 | 4.1.1.1.2 | Przeprowadź przegląd projektu | 1d | 2024-03-25 | 2024-03-25 | 11d |
| 73 | 4.1.1.1.3 | Dostarcz ostateczne specyfikacje funkcjonalne | 1d | 2024-03-25 | 2024-03-25 | 11d |
| 74 | 4.1.1.1.4 | Uzyskaj akceptację użytkownika | 1d | 2024-03-25 | 2024-03-25 | 11d |
| 75 | 4.2 | **Implementacja** | 1d | 2024-03-25 | 2024-03-25 | 11d |
| 76 | 4.2.1 | **Interfejs WWW** | 1d | 2024-03-25 | 2024-03-25 | 11d |
| 77 | 4.2.1.1 | Kodowanie strony internetowej | 1d | 2024-03-25 | 2024-03-25 | 11d |
| 78 | 4.2.1.2 | Przeprowadzenie testów jednostkowych | 1d | 2024-03-25 | 2024-03-25 | 11d |
| 79 | 4.2.1.3 | Przejrzenie projektu / funkcjonalności strony internetowej | 1d | 2024-03-25 | 2024-03-25 | 11d |
| 80 | 4.2.1.4 | Uzyskaj akceptację użytkownika | 1d | 2024-03-25 | 2024-03-25 | 11d |
| 81 | 4.3 | **Interfejs WWW** | 1d | 2024-03-25 | 2024-03-25 | 11d |
| 82 | 4.3.1 | Sprawdź projekt i funkcjonalność | 1d | 2024-03-25 | 2024-03-25 | 11d |
| 83 | 4.3.2 | Przeprowadzenie testów jednostkowych | 1d | 2024-03-25 | 2024-03-25 | 11d |
| 84 | 4.4 | **Zapewnienie jakości** | 1d | 2024-03-25 | 2024-03-25 | 11d |
| 85 | 4.4.1 | **Raporty** | 1d | 2024-03-25 | 2024-03-25 | 11d |
| 86 | 4.4.1.1 | Sprawdź projekt i funkcjonalność | 1d | 2024-03-25 | 2024-03-25 | 11d |
| 90 | 5 | **Iteracja 5 - Integracja modułów** | 1d | 2024-03-25 | 2024-03-25 | 11d |
| 91 | 5.1 | **Zapewnienie jakości** | 1d | 2024-03-25 | 2024-03-25 | 11d |
| 92 | 5.1.1 | **Interfejs WWW** | 1d | 2024-03-25 | 2024-03-25 | 11d |
| 93 | 5.1.1.1 | Wykonaj test integracji | 1d | 2024-03-25 | 2024-03-25 | 11d |
| 94 | 5.1.1.2 | Wykonaj test akceptacji użytkownika | 1d | 2024-03-25 | 2024-03-25 | 11d |
| 95 | 5.1.1.3 | Uzyskaj akceptację użytkownika | 1d | 2024-03-25 | 2024-03-25 | 11d |

| ID | WBS | Task | Duration | Start | Finish | Total slack |
| --- | --- | --- | --- | --- | --- | --- |
| 96 | 5.1.2 | **Baza danych SQL** | 1d | 2024-03-25 | 2024-03-25 | 11d |
| 97 | 5.1.2.1 | Wykonaj test integracji | 1d | 2024-03-25 | 2024-03-25 | 11d |
| 98 | 5.1.2.2 | Wykonaj test akceptacji użytkownika | 1d | 2024-03-25 | 2024-03-25 | 11d |
| 99 | 5.1.2.3 | Uzyskaj akceptację użytkownika | 1d | 2024-03-25 | 2024-03-25 | 11d |
| 100 | 5.1.3 | **Interfejsy** | 1d | 2024-03-25 | 2024-03-25 | 11d |
| 101 | 5.1.3.1 | Wykonaj test integracji | 1d | 2024-03-25 | 2024-03-25 | 11d |
| 102 | 5.1.3.2 | Wykonaj test akceptacji użytkownika | 1d | 2024-03-25 | 2024-03-25 | 11d |
| 103 | 5.1.3.3 | Uzyskaj akceptację użytkownika | 1d | 2024-03-25 | 2024-03-25 | 11d |
| 104 | 5.1.4 | **Raporty** | 1d | 2024-03-25 | 2024-03-25 | 11d |
| 105 | 5.1.4.1 | Raportuj test integracji | 1d | 2024-03-25 | 2024-03-25 | 11d |
| 106 | 5.2 | **Implementacja** | 1d | 2024-03-25 | 2024-03-25 | 11d |
| 107 | 5.2.1 | Wprowadzenie poprawek na podstawie wyników testów integracyjnych | 1d | 2024-03-25 | 2024-03-25 | 11d |
| 108 | 5.3 | **Zapewnienie jakości** | 1d | 2024-03-25 | 2024-03-25 | 11d |
| 109 | 5.3.1 | **Interfejs WWW** | 1d | 2024-03-25 | 2024-03-25 | 11d |
| 110 | 5.3.1.1 | Wykonaj test akceptacji użytkownika | 1d | 2024-03-25 | 2024-03-25 | 11d |
| 111 | 5.3.2 | **Baza danych SQL** | 1d | 2024-03-25 | 2024-03-25 | 11d |
| 112 | 5.3.2.1 | Wykonaj test akceptacji użytkownika | 1d | 2024-03-25 | 2024-03-25 | 11d |
| 113 | 5.3.3 | **Interfejsy** | 1d | 2024-03-25 | 2024-03-25 | 11d |
| 114 | 5.3.3.1 | Wykonaj test akceptacji użytkownika | 1d | 2024-03-25 | 2024-03-25 | 11d |
| 115 | 5.3.4 | **Raporty** | 1d | 2024-03-25 | 2024-03-25 | 11d |
| 116 | 5.3.4.1 | Raportuj test akceptacji użytkownika | 1d | 2024-03-25 | 2024-03-25 | 11d |
| 120 | 6 | **Iteracja 6 - Wprowadzenie projektu** | 1d? | 2024-03-25 | 2024-03-25 | 11d |
| 121 | 6.1 | **Projektowanie** | 1d | 2024-03-25 | 2024-03-25 | 11d |
| 122 | 6.1.1 | **Informacja zwrotna** | 1d | 2024-03-25 | 2024-03-25 | 11d |
| 123 | 6.1.1.1 | Zdefiniowanie wymaganych modyfikacji | 1d | 2024-03-25 | 2024-03-25 | 11d |
| 124 | 6.1.1.2 | Akceptacja użytkownika | 1d | 2024-03-25 | 2024-03-25 | 11d |

| ID | WBS | Task | Duration | Start | Finish | Total slack |
| --- | --- | --- | --- | --- | --- | --- |
| 125 | 6.2 | **Implementacja** | 1d? | 2024-03-25 | 2024-03-25 | 11d |
| 126 | 6.2.1 | Implementacja modyfikacji określonych przez użytkownika | 1d? | 2024-03-25 | 2024-03-25 | 11d |
| 127 | 6.3 | **Zapewnienie jakości** | 1d | 2024-03-25 | 2024-03-25 | 11d |
| 128 | 6.3.1 | Wykonaj test integracji | 1d | 2024-03-25 | 2024-03-25 | 11d |
| 129 | 6.3.2 | Wykonaj test akceptacji użytkownika | 1d | 2024-03-25 | 2024-03-25 | 11d |
| 130 | 6.3.3 | Uzyskaj akceptację użytkownika | 1d | 2024-03-25 | 2024-03-25 | 11d |
| 131 | 6.4 | **Raporty** | 1d | 2024-03-25 | 2024-03-25 | 11d |
| 132 | 6.4.1 | Uzyskaj akceptację użytkownika | 1d | 2024-03-25 | 2024-03-25 | 11d |
